# Management Resource Planning ver 1.0

Schedule from MS Project, 2021-03-16 to 2022-03-18.

## Calendars

- Standard: Mon-Fri 08:00-12:00, 13:00-17:00; Sat-Sun off. Exceptions (off unless hours are given): 2021-04-02 (Jumat Agung), 2021-05-10 to 2021-05-14 (Cuti Bersama Lebaran), 2021-05-26 (Hari Waisak), 2021-06-01 (Hari Lahir Pancasila), 2021-07-20 (Idul Adha), 2021-08-10 (Tahun Baru Islam), 2021-08-17 (Hari Kemerdekaan), 2021-10-19 (Maulid Nabi Muhammad SAW), 2021-12-24 to 2021-12-31 (Cuti Bersama Hari Natal), 2022-01-01 (Tahun Baru 2022).

## Resources

| Resource |
| --- |
| Lukas |
| Nico |
| Developer |
| Project Manager |
| Technical Writer |
| Steering Commitee |
| Client Staff |
| Developer 1 |
| Developer 2 |
| IT PPS |
| Project Monitoring |
| Ulla |
| Siswanto |

## Schedule

| ID | WBS | Task | Type | Duration | Start | Finish | Predecessors | Total slack | Free slack | Constraint | Resources | Work |
| --- | --- | --- | --- | --- | --- | --- | --- | --- | --- | --- | --- | --- |
| 1 | 1 | **Enterprise Resource Planning** |  | 246d | 2021-03-16 | 2022-03-18 |  | 0d |  |  |  | 4600h |
| 2 | 1.1 | Persiapan Trial Module Sales |  | 4d | 2021-03-16 | 2021-03-19 |  | 238d | 0d | start no earlier than 2021-03-16 | Project Manager | 32h |
| 3 | 1.2 | Trial Module Sales |  | 19d | 2021-03-22 | 2021-04-16 | 2 | 243d |  | start no earlier than 2021-03-01 | Project Manager | 152h |
| 4 | 1.3 | Review Module Sales |  | 19d | 2021-03-22 | 2021-04-16 | 2 | 243d |  |  | Project Manager | 152h |
| 5 | 1.4 | Bug Fixed Module Sales |  | 19d | 2021-03-22 | 2021-04-16 | 2 | 238d | 0d |  | Project Manager | 152h |
| 6 | 1.5 | BAST Module Sales |  | 5d | 2021-04-19 | 2021-04-23 | 5 | 238d |  |  | Project Manager | 40h |
| 7 | 1.6 | Persiapan Trial Module Purchase / PPIC / Engineering |  | 14d | 2021-03-29 | 2021-04-16 | 3 | 190d | 0d | start no earlier than 2021-03-29 | Project Manager | 112h |
| 8 | 1.7 | Trial Module Purchase / PPIC / Engineering |  | 48d | 2021-04-19 | 2021-07-02 | 7 | 195d |  |  | Project Manager | 384h |
| 9 | 1.8 | Review Module Purchase / PPIC / Engineering |  | 48d | 2021-04-19 | 2021-07-02 | 7 | 195d |  |  | Project Manager | 384h |
| 10 | 1.9 | Bug Fixed Module Purchase / PPIC / Engineering |  | 48d | 2021-04-19 | 2021-07-02 | 7 | 190d | 0d |  | Project Manager | 384h |
| 11 | 1.10 | BAST Module Purchase / PPIC / Engineering |  | 5d | 2021-07-05 | 2021-07-09 | 10 | 190d |  |  | Project Manager | 40h |
| 12 | 1.11 | Persiapan Trial Module Finance | manual | 13d | 2021-07-12 | 2021-07-29 |  |  |  |  | Project Manager | 104h |
| 13 | 1.12 | Trial Module Finance |  | 30d | 2021-07-30 | 2021-09-13 | 12 | 138d |  | finish no earlier than 2021-06-18 | Project Manager | 240h |
| 14 | 1.13 | Review Module Finance |  | 30d | 2021-07-30 | 2021-09-13 | 12 | 138d |  | finish no earlier than 2021-07-02 | Project Manager | 240h |
| 15 | 1.14 | Bug Fixed Module Finance |  | 30d | 2021-07-30 | 2021-09-13 | 12 | 134d | 0d | finish no earlier than 2021-07-16 | Project Manager | 240h |
| 16 | 1.15 | BAST Module Finance |  | 4d | 2021-09-14 | 2021-09-17 | 15 | 134d |  |  | Project Manager | 32h |
| 17 | 1.16 | Persiapan Trial Module Asset Management / Accounting |  | 9d | 2021-10-11 | 2021-10-22 |  | 64d | 0d | start no earlier than 2021-10-11 | Project Manager | 72h |
| 18 | 1.17 | Trial Module Asset Management / Accounting |  | 30d | 2021-10-25 | 2021-12-03 | 17 | 80d |  |  | Project Manager | 240h |
| 19 | 1.18 | Review Module Asset Management / Accounting |  | 30d | 2021-10-25 | 2021-12-03 | 17 | 80d |  |  | Project Manager | 240h |
| 20 | 1.19 | Bug Fixed Module Asset Management / Accounting |  | 30d | 2021-10-25 | 2021-12-03 | 17 | 64d | 0d |  | Project Manager | 240h |
| 21 | 1.20 | BAST Module Asset Management / Accounting |  | 5d | 2021-12-06 | 2021-12-10 | 20 | 64d |  |  | Project Manager | 40h |
| 22 | 1.21 | Persiapan Trial Module Payroll | manual | 10d | 2022-01-03 | 2022-01-14 |  |  |  |  | Project Manager | 80h |
| 23 | 1.22 | Trial Module Payroll |  | 40d | 2022-01-17 | 2022-03-11 | 22 | 5d |  |  | Project Manager | 320h |
| 24 | 1.23 | Review Module Payroll |  | 40d | 2022-01-17 | 2022-03-11 | 22 | 5d |  |  | Project Manager | 320h |
| 25 | 1.24 | Bug Fixed Module Payroll |  | 40d | 2022-01-17 | 2022-03-11 | 22 | 0d |  |  | Project Manager | 320h |
| 26 | 1.25 | BAST Module Payroll |  | 5d | 2022-03-14 | 2022-03-18 | 25 | 0d |  |  | Project Manager | 40h |
